# Project_Accelerometer_Inclination_Test_Platform_1

Schedule from MS Project, 2024-01-24 to 2024-12-08.

## Calendars

- Standard: Mon-Fri 08:00-12:00, 13:00-17:00; Sat-Sun off. Exceptions (off unless hours are given): 2024-02-04 08:00-12:00, 13:00-17:00, 2024-02-11 08:00-12:00, 13:00-17:00, 2024-03-03 08:00-12:00, 13:00-17:00, 2024-05-05 08:00-12:00, 13:00-17:00, 2024-09-01 08:00-12:00, 13:00-17:00.

## Resources

| Resource |
| --- |
| Khan |
| Xavior |
| Team |
| Warren |
| Lucas |

## Schedule

| ID | WBS | Task | Type | Duration | Start | Finish | Predecessors | Total slack | Free slack | Constraint | Resources | Work |
| --- | --- | --- | --- | --- | --- | --- | --- | --- | --- | --- | --- | --- |
| 1 | 1 | **Accelerometer Inclination Test Platform** |  | 233d? | 2024-01-24 | 2024-12-08 |  | 0d |  |  |  | 2144h |
| 2 | 1.1 | **Semester 1** |  | 81d? | 2024-01-24 | 2024-05-10 |  | 0d |  |  |  | 1864h |
| 3 | 1.1.1 | **Initiation Phase** |  | 28d | 2024-01-24 | 2024-02-28 |  | 0d |  |  |  | 512h |
| 4 | 1.1.1.1 | Propose DMEA Project to Professor Levine | manual | 11d | 2024-01-24 | 2024-02-06 |  |  |  |  | Team; Khan; Lucas; Warren; Xavior | 440h |
| 5 | 1.1.1.2 | Submit Levine-Approved Proposal to DMEA | manual | 1d | 2024-02-07 | 2024-02-07 |  |  |  |  | Xavior | 8h |
| 6 | 1.1.1.3 | **Review and Commit to Parts List** |  | 4d | 2024-02-23 | 2024-02-28 |  | 199d | 9d |  | Team | 64h |
| 7 | 1.1.1.3.1 | Material Request Form |  | 4d | 2024-02-23 | 2024-02-28 |  | 199d |  | finish no earlier than 2024-02-28 | Xavior | 32h |
| 8 | 1.1.2 | **Semester 1 Research Phase** |  | 29d? | 2024-02-11 | 2024-03-19 |  | 16d |  |  |  | 280h |
| 9 | 1.1.2.1 | Design Idea Contract |  | 5d | 2024-02-11 | 2024-02-15 |  | 214d |  | start no earlier than 2024-02-11 | Team | 40h |
| 10 | 1.1.2.2 | Revised Design Idea Contract | manual | 6d | 2024-03-03 | 2024-03-08 |  |  |  |  | Warren | 48h |
| 11 | 1.1.2.3 | Work Breakdown Structure |  | 1d? | 2024-02-26 | 2024-02-26 |  | 207d |  | start no earlier than 2024-02-26 | Lucas | 8h |
| 12 | 1.1.2.4 | Review Github / Version Control |  | 3d? | 2024-03-04 | 2024-03-06 |  | 199d |  | finish no earlier than 2024-03-06 | Team | 24h |
| 13 | 1.1.2.5 | Review and Determine STM Communication Protocol |  | 8d? | 2024-03-05 | 2024-03-14 |  | 166d | 0d | start no earlier than 2024-03-05 | Lucas | 64h |
| 14 | 1.1.2.6 | Research TTL Serial Communication Protocol |  | 6d? | 2024-03-12 | 2024-03-19 |  | 190d |  | finish no earlier than 2024-03-19 | Khan | 48h |
| 15 | 1.1.2.7 | Research/Locate Hardware Footprint Measurements for CAD |  | 6d | 2024-03-12 | 2024-03-19 |  | 182d | 0d | finish no earlier than 2024-03-19 | Xavior | 48h |
| 16 | 1.1.3 | **Semester 1 Design Phase** |  | 40d? | 2024-03-12 | 2024-05-05 |  | 4d |  |  |  | 920h |
| 17 | 1.1.3.1 | Assemble Prototype | milestone, manual | 0d | 2024-04-07 | 2024-04-07 |  |  |  |  |  |  |
| 18 | 1.1.3.2 | **Hardware** |  | 40d? | 2024-03-12 | 2024-05-05 |  | 4d |  |  |  | 432h |
| 19 | 1.1.3.2.1 | **Power Supply** |  | 4d | 2024-04-02 | 2024-04-07 |  | 177d |  |  |  | 32h |
| 20 | 1.1.3.2.1.1 | Wire Power Supply to Board |  | 4d | 2024-04-02 | 2024-04-07 | 6 | 177d |  | finish no earlier than 2024-04-07 | Lucas | 32h |
| 21 | 1.1.3.2.2 | **Accelerometer** |  | 16d | 2024-03-18 | 2024-04-07 |  |  |  |  |  | 72h |
| 22 | 1.1.3.2.2.1 | Pin Assignment |  | 5d | 2024-03-19 | 2024-03-25 | 13 | 182d | 5d | finish no earlier than 2024-03-25 | Warren | 40h |
| 23 | 1.1.3.2.2.2 | Wire Pins |  | 4d | 2024-04-02 | 2024-04-07 | 22 | 177d |  | finish no earlier than 2024-04-07 | Warren | 32h |
| 24 | 1.1.3.2.3 | **Servo Motors** |  | 2d | 2024-03-15 | 2024-03-18 |  | 166d |  |  |  | 16h |
| 25 | 1.1.3.2.3.1 | Pin Assignment |  | 1d | 2024-03-15 | 2024-03-15 | 13 | 166d | 0d |  | Warren | 8h |
| 26 | 1.1.3.2.3.2 | Wire Pins |  | 1d | 2024-03-18 | 2024-03-18 | 25 | 166d | 9d |  | Warren | 8h |

| ID | WBS | Task | Type | Duration | Start | Finish | Predecessors | Total slack | Free slack | Constraint | Resources | Work |
| --- | --- | --- | --- | --- | --- | --- | --- | --- | --- | --- | --- | --- |
| 27 | 1.1.3.2.4 | **Fixture** |  | 40d? | 2024-03-12 | 2024-05-05 |  | 156d |  |  |  | 312h |
| 28 | 1.1.3.2.4.1 | **Tune Printer** |  | 6d? | 2024-03-12 | 2024-03-19 |  | 190d |  |  |  | 48h |
| 29 | 1.1.3.2.4.1.1 | Filament Test Print |  | 1d | 2024-03-12 | 2024-03-12 | 6 | 190d | 0d | finish no earlier than 2024-03-12 | Xavior | 8h |
| 30 | 1.1.3.2.4.1.2 | Determine Optimal Print Settings |  | 5d? | 2024-03-13 | 2024-03-19 | 29 | 190d |  | finish no earlier than 2024-03-19 | Xavior | 40h |
| 31 | 1.1.3.2.4.2 | **Tilt Platform** |  | 34d | 2024-03-20 | 2024-05-05 |  | 156d |  |  |  | 264h |
| 32 | 1.1.3.2.4.2.1 | Design Tilt Platform Model in CAD |  | 8d | 2024-03-20 | 2024-03-31 | 15 | 182d |  | finish no earlier than 2024-03-31 | Xavior | 64h |
| 33 | 1.1.3.2.4.2.2 | Print Tilt Platform Prototype |  | 1d | 2024-04-01 | 2024-04-01 | 26 | 157d | 0d | start no earlier than 2024-04-01 | Xavior | 8h |
| 34 | 1.1.3.2.4.2.3 | Assemble Tilt Platform Prototype |  | 4d | 2024-04-02 | 2024-04-07 | 33 | 157d | 1d | finish no earlier than 2024-04-07 | Xavior | 32h |
| 35 | 1.1.3.2.4.2.4 | Review and Iterate Tilt Platform Design |  | 20d | 2024-04-09 | 2024-05-05 | 34 | 156d |  | finish no earlier than 2024-05-05 | Team | 160h |
| 36 | 1.1.3.3 | **Firmware** |  | 15d | 2024-03-19 | 2024-04-08 |  | 0d |  |  |  | 488h |
| 37 | 1.1.3.3.1 | **Servo Control** |  | 15d | 2024-03-19 | 2024-04-08 |  | 0d |  |  |  | 256h |
| 38 | 1.1.3.3.1.1 | Movement Signaling | manual | 5d | 2024-03-19 | 2024-03-24 |  |  |  |  | Khan; Warren | 80h |
| 39 | 1.1.3.3.1.2 | Confirm Servo Movement | manual | 11d | 2024-03-25 | 2024-04-08 |  |  |  |  | Khan; Warren | 176h |
| 40 | 1.1.3.3.2 | **Accelerometer Control** |  | 10d | 2024-03-19 | 2024-04-01 |  | 181d |  |  |  | 72h |
| 41 | 1.1.3.3.2.1 | Receive Data |  | 4d | 2024-03-19 | 2024-03-24 |  | 182d | 1d | finish no earlier than 2024-03-24 | Lucas | 32h |
| 42 | 1.1.3.3.2.2 | Display Data Received |  | 5d | 2024-03-26 | 2024-04-01 | 41 | 181d |  | start no earlier than 2024-03-26 | Lucas | 40h |
| 43 | 1.1.3.3.3 | **Instruction Set** |  | 10d | 2024-03-19 | 2024-04-02 |  | 10d |  |  |  | 160h |
| 44 | 1.1.3.3.3.1 | Create Movement Profiles |  | 8d | 2024-03-19 | 2024-03-28 |  | 181d | 0d | finish no earlier than 2024-03-28 | Khan; Lucas | 128h |
| 45 | 1.1.3.3.3.2 | Recall and Execute Movement Profiles |  | 2d | 2024-03-29 | 2024-04-01 | 44 | 181d |  | start no earlier than 2024-03-29 | Khan; Lucas | 32h |
| 46 | 1.1.3.3.3.3 | Instruction Set Prototype Finished | milestone, manual | 0d | 2024-04-02 | 2024-04-02 |  |  |  |  |  |  |
| 47 | 1.1.4 | **Semester 1 Final Phase** |  | 10d | 2024-04-29 | 2024-05-10 |  | 10d |  |  |  | 152h |
| 48 | 1.1.4.1 | Report |  | 9d | 2024-04-29 | 2024-05-08 |  | 153d |  | start no earlier than 2024-04-29 | Lucas | 72h |
| 49 | 1.1.4.2 | Poster |  | 10d | 2024-04-29 | 2024-05-09 |  | 152d |  | start no earlier than 2024-04-29 | Team | 80h |
| 50 | 1.1.4.3 | Present Semester 1 Prototype | milestone, manual | 0d | 2024-05-10 | 2024-05-10 |  |  |  |  |  |  |

| ID | WBS | Task | Type | Duration | Start | Finish | Predecessors | Total slack | Constraint | Resources | Work |
| --- | --- | --- | --- | --- | --- | --- | --- | --- | --- | --- | --- |
| 51 | 1.2 | **Semester 2** |  | 72d | 2024-09-01 | 2024-12-08 |  |  |  |  | 280h |
| 52 | 1.2.1 | **Semester 2 Research Phase** |  | 18d | 2024-09-01 | 2024-09-24 |  | 0d |  |  |  |
| 53 | 1.2.1.1 | Critique Semester 1 Prototype |  | 6d | 2024-09-01 | 2024-09-06 |  | 0d |  |  |  |
| 54 | 1.2.1.2 | Research Design Revisions |  | 6d | 2024-09-09 | 2024-09-16 | 53 | 0d |  |  |  |
| 55 | 1.2.1.3 | Research and Order New Parts |  | 6d | 2024-09-17 | 2024-09-24 | 54 | 0d |  |  |  |
| 56 | 1.2.2 | **Semester 2 Design Phase** |  | 53d | 2024-09-25 | 2024-12-06 |  | 0d |  |  | 280h |
| 57 | 1.2.2.1 | **Implement Design Revisions** |  | 21d | 2024-09-25 | 2024-10-23 |  | 0d |  | Team | 168h |
| 58 | 1.2.2.1.1 | **Hardware** |  | 21d | 2024-09-25 | 2024-10-23 |  | 0d |  |  |  |
| 59 | 1.2.2.1.1.1 | **Fixture** |  | 19d | 2024-09-25 | 2024-10-21 |  |  |  |  |  |
| 60 | 1.2.2.1.1.1.1 | Tune Printer | manual | 6d | 2024-09-25 | 2024-10-02 | 55 |  |  |  |  |
| 61 | 1.2.2.1.1.1.2 | Tilt Platform | manual | 13d | 2024-10-03 | 2024-10-21 | 60 |  |  |  |  |
| 62 | 1.2.2.1.1.2 | Power Supply |  | 6d | 2024-09-25 | 2024-10-02 | 55 | 15d |  |  |  |
| 63 | 1.2.2.1.1.3 | Servo Motors | manual | 13d | 2024-09-25 | 2024-10-11 | 55 |  |  |  |  |
| 64 | 1.2.2.1.1.4 | Accelerometer | manual | 21d | 2024-09-25 | 2024-10-23 | 55 |  |  |  |  |
| 65 | 1.2.2.1.2 | **Firmware** |  | 13d | 2024-09-25 | 2024-10-11 |  | 0d |  |  |  |
| 66 | 1.2.2.1.2.1 | Instruction Set | manual | 13d | 2024-09-25 | 2024-10-11 | 55 |  |  |  |  |
| 67 | 1.2.2.1.2.2 | Accelerometer Control | manual | 6d | 2024-09-25 | 2024-10-02 | 55 |  |  |  |  |
| 68 | 1.2.2.1.2.3 | Servo Motor Control | manual | 6d | 2024-09-25 | 2024-10-02 | 55 |  |  |  |  |
| 69 | 1.2.2.2 | **Electronic Housing** |  | 20d | 2024-10-24 | 2024-11-20 | 57 | 0d |  |  | 112h |
| 70 | 1.2.2.2.1 | Design Electronic Housing Model in CAD |  | 6d | 2024-10-24 | 2024-10-31 | 57 | 0d | finish no earlier than 2024-09-15 | Xavior | 48h |
| 71 | 1.2.2.2.2 | Print Electronic Housing Prototype |  | 2d | 2024-11-01 | 2024-11-04 | 70 | 0d | start no earlier than 2024-11-01 | Xavior | 16h |
| 72 | 1.2.2.2.3 | Review and Iterate Electronic Housing Design |  | 6d | 2024-11-05 | 2024-11-20 | 71 | 0d |  | Xavior | 48h |
| 73 | 1.2.2.2.4 | Finish Electronic Housing | milestone, manual | 0d | 2024-11-20 | 2024-11-20 |  |  |  |  |  |
| 74 | 1.2.2.3 | **Final Build** |  | 12d | 2024-11-21 | 2024-12-06 | 72 | 0d |  |  |  |
| 75 | 1.2.2.3.1 | Assemble Upgrades and Electronic Housing | manual | 6d | 2024-11-21 | 2024-11-28 | 72 |  |  |  |  |
| 76 | 1.2.2.3.2 | Test to spec | manual | 6d | 2024-11-29 | 2024-12-06 | 75 |  |  |  |  |
| 77 | 1.2.2.3.3 | Build Final Product | milestone, manual | 0d | 2024-11-29 | 2024-11-29 |  |  |  |  |  |

| ID | WBS | Task | Type | Duration | Start | Finish | Total slack | Constraint |
| --- | --- | --- | --- | --- | --- | --- | --- | --- |
| 78 | 1.2.3 | **Semester 2 Final Phase** |  | 10d | 2024-11-25 | 2024-12-08 | 0d |  |
| 79 | 1.2.3.1 | Report | manual | 11d | 2024-11-25 | 2024-12-08 |  | start no earlier than 2024-11-25 |
| 80 | 1.2.3.2 | Other Final Presentation Preperations | manual | 11d | 2024-11-25 | 2024-12-08 |  | start no earlier than 2024-11-25 |
